# National Health Campaign

Schedule from MS Project, 2024-03-01 to 2024-04-19, costs in €, A marks actual dates.
Research Programme
ABC Research Ltd.

## Calendars

- Standard: Mon-Fri 08:00-12:00, 13:00-17:00; Sat-Sun off.

## Resources

| Resource | Group | Rate |
| --- | --- | --- |
| Joanne Kelly | Management | 19.23 |
| Riona Carr | Executive | 6.25 |
| Mary Breen | Management | 19.23 |
| Tom Joyce | Office Staff | 6.88 |
| Conf Room | Facilities |  |
| Junior Staff | Office Staff | 3.75 |
| Printing | External |  |

## Schedule

| ID | WBS | Task | Type | Duration | Start | Finish | Predecessors | Complete | Remaining | Baseline start | Baseline finish | Baseline duration | Total slack | Free slack | Resources | Work | Actual work | Cost | Baseline cost | Actual cost |
| --- | --- | --- | --- | --- | --- | --- | --- | --- | --- | --- | --- | --- | --- | --- | --- | --- | --- | --- | --- | --- |
| 1 | 1 | **National Health Campaign** |  | 36d | 2024-03-01 A | 2024-04-19 |  | 9% | 32.9d | 2024-03-01 | 2024-04-24 | 39d? | 0d |  |  | 456h | 32h | 4,344.42 | 4,314.42 | 367.69 |
| 2 | 1.1 | **Planning** |  | 9d | 2024-03-01 A | 2024-03-13 |  | 33% | 6d | 2024-03-01 | 2024-03-19 | 13d? | 27d |  |  | 96h | 32h | 517.69 | 487.69 | 367.69 |
| 3 | 1.1.1 | Design questionnaire |  | 2d | 2024-03-01 A | 2024-03-04 A |  | 100% |  | 2024-03-01 | 2024-03-04 | 2d |  |  | Joanne Kelly | 16h | 16h | 307.69 | 307.69 | 307.69 |
| 4 | 1.1.2 | Type questionnaire |  | 2d | 2024-03-05 A | 2024-03-06 A | 3 | 100% |  | 2024-03-05 | 2024-03-05 | 1d |  |  | Junior Staff | 16h | 16h | 60 | 30 | 60 |
| 5 | 1.1.3 | Print questionnaire |  | 1w | 2024-03-07 | 2024-03-13 | 4 |  |  | 2024-03-06 | 2024-03-12 | 1w | 0d |  | Printing | 40h |  |  |  |  |
| 6 | 1.1.4 | Invite interviewers to briefing meeting |  | 3d | 2024-03-07 | 2024-03-11 | 5SS |  |  | 2024-03-06 | 2024-03-08 | 3d | 29d | 0d | Riona Carr | 24h |  | 150 | 150 |  |
| 7 | 1.1.5 | Survey planning complete | milestone | 0d | 2024-03-11 | 2024-03-11 | 6 |  |  | 2024-03-18 | 2024-03-18 | 0d | 29d |  |  |  |  |  |  |  |
| 8 | 1.2 | **Briefing Setup** |  | 9.5d | 2024-03-14 | 2024-03-27 |  |  |  | 2024-03-01 | 2024-03-15 | 11d | 0d |  |  | 84h |  | 472.5 | 472.5 |  |
| 9 | 1.2.1 | Book conference room for briefing meeting |  | 4h | 2024-03-14 | 2024-03-14 | 5 |  |  | 2024-03-13 | 2024-03-13 | 4h | 0d |  | Tom Joyce | 4h |  | 27.5 | 27.5 |  |
| 10 | 1.2.2 | Contact interviewing locations |  | 2d | 2024-03-14 | 2024-03-15 | 9SS |  |  | 2024-03-13 | 2024-03-14 | 2d | 0d |  | Tom Joyce | 16h |  | 110 | 110 |  |
| 11 | 1.2.3 | Prepare rosters |  | 4d | 2024-03-18 | 2024-03-21 | 10 |  |  | 2024-03-05 | 2024-03-11 | 4d | 0d |  | Tom Joyce | 32h |  | 220 | 220 |  |
| 12 | 1.2.4 | Prepare packs for each interviewer |  | 3d | 2024-03-22 | 2024-03-26 | 11 |  |  | 2024-03-11 | 2024-03-14 | 3d | 0d |  | Junior Staff | 24h |  | 90 | 90 |  |
| 13 | 1.2.5 | Briefing Meeting with Interviewers |  | 4h | 2024-03-27 | 2024-03-27 | 12 |  |  | 2024-03-14 | 2024-03-14 | 4h | 0d |  | Conf Room; Riona Carr | 8h |  | 25 | 25 |  |
| 14 | 1.2.6 | Interviewers briefing complete | milestone | 0d | 2024-03-27 | 2024-03-27 | 13 |  |  | 2024-03-15 | 2024-03-15 | 0d | 0d |  |  |  |  |  |  |  |
| 15 | 1.3 | **Data Processing** |  | 9.5d | 2024-03-27 | 2024-04-09 | 8 |  |  | 2024-03-01 | 2024-03-25 | 17d | 0d |  |  | 148h |  | 892.69 | 892.69 |  |
| 16 | 1.3.1 | Prepare Book-in forms |  | 2d | 2024-03-27 | 2024-03-29 |  |  |  | 2024-03-01 | 2024-03-04 | 2d | 3.5d | 0d | Riona Carr | 16h |  | 100 | 100 |  |
| 17 | 1.3.2 | Check questionnaires |  | 2d | 2024-03-29 | 2024-04-02 | 16 |  |  | 2024-03-05 | 2024-03-06 | 2d | 3.5d |  | Junior Staff | 16h |  | 60 | 60 |  |
| 18 | 1.3.3 | Code questionnaires |  | 1.5w | 2024-03-27 | 2024-04-05 | 17FF |  |  | 2024-02-26 | 2024-03-06 | 1.5w | 0d |  | Junior Staff | 60h |  | 225 | 225 |  |
| 19 | 1.3.4 | Input data in computer |  | 3d | 2024-04-03 | 2024-04-05 | 18FS-3d |  |  | 2024-03-04 | 2024-03-06 | 3d | 0d |  | Junior Staff | 24h |  | 90 | 90 |  |
| 20 | 1.3.5 | Analyse the data |  | 2d | 2024-04-08 | 2024-04-09 | 19 |  |  | 2024-03-21 | 2024-03-25 | 2d | 0d |  | Joanne Kelly; Tom Joyce | 32h |  | 417.69 | 417.69 |  |
| 21 | 1.3.6 | Data processing complete | milestone | 0d | 2024-04-09 | 2024-04-09 | 20 |  |  | 2024-03-25 | 2024-03-25 | 0d | 0d |  |  |  |  |  |  |  |
| 22 | 1.4 | **Interpretation** |  | 8d | 2024-04-10 | 2024-04-19 | 15 |  |  | 2024-03-01 | 2024-03-13 | 9d | 0d |  |  | 128h |  | 2,461.54 | 2,461.54 |  |
| 23 | 1.4.1 | Prepare presentation |  | 3d | 2024-04-10 | 2024-04-12 |  |  |  | 2024-03-01 | 2024-03-05 | 3d | 0d |  | Joanne Kelly; Mary Breen | 48h |  | 923.08 | 923.08 |  |
| 24 | 1.4.2 | Prepare research report |  | 1w | 2024-04-15 | 2024-04-19 | 23 |  |  | 2024-03-06 | 2024-03-12 | 1w | 0d |  | Joanne Kelly; Mary Breen | 80h |  | 1,538.46 | 1,538.46 |  |
| 25 | 1.4.3 | Project complete | milestone | 0d | 2024-04-19 | 2024-04-19 | 24 |  |  | 2024-03-13 | 2024-03-13 | 0d | 0d |  |  |  |  |  |  |  |
